# Ganglinien

How a schedule from GanttProject changed from version to version. A marks actual dates.

## Version 1 (saved 2007-05-02)

Note of the change: Definition von Ganglinien fertig.

| ID | WBS | Task | Duration | Start | Finish | Predecessors | Complete |
| --- | --- | --- | --- | --- | --- | --- | --- |
| 1 | 1 | **SWE 5.5 Funktionen Ganglinien** | 10d | 2007-05-02 | 2007-05-15 |  | 9% |
| 2 | 1.1 | **Ganglinie** | 6d | 2007-05-02 | 2007-05-09 |  | 16% |
| 3 |  | Definition | 1d | 2007-05-02 | 2007-05-02 |  | 100% |
| 4 |  | Approximation | 2d | 2007-05-03 | 2007-05-04 | 3 |  |
| 5 |  | Math. Operationen | 1d | 2007-05-07 | 2007-05-07 | 3, 4 |  |
| 6 |  | Pattern Matching | 2d | 2007-05-08 | 2007-05-09 | 5 |  |
| 7 | 1.2 | **Verwaltung** | 4d | 2007-05-10 | 2007-05-15 |  |  |
| 8 |  | Erweiterung MQ | 1d | 2007-05-10 | 2007-05-10 |  |  |
| 9 |  | Kommunikation mit DaV | 3d | 2007-05-11 | 2007-05-15 | 8 |  |

## Version 2 (saved 2007-05-03)

Note of the change: Aktueller Stand

Last finish stays 2007-05-15.

Changed:

| ID | Task | Complete |
| --- | --- | --- |
| 1 | **SWE 5.5 Funktionen Ganglinien** | 9% → 12% |
| 2 | **Ganglinie** | 16% → 21% |
| 4 | Approximation | 0% → 15% |

## Version 3 (saved 2007-05-21)

Note of the change: Projektfortschritt aktuallisiert

Last finish 2007-05-15 → 2007-05-14 (-1d). Complete tasks 1 → 4.

Changed:

| ID | Task | Finish | Duration | Complete |
| --- | --- | --- | --- | --- |
| 1 | **SWE 5.5 Funktionen Ganglinien** | 2007-05-15 → 2007-05-14 (-1d) | 10d → 9d | 12% → 64% |
| 2 | **Ganglinie** |  |  | 21% → 100% |
| 4 | Approximation |  |  | 15% → 100% |
| 5 | Math. Operationen |  |  | 0% → 100% |
| 6 | Pattern Matching |  |  | 0% → 100% |
| 7 | **Verwaltung** | 2007-05-15 → 2007-05-14 (-1d) | 4d → 3d | 0% → 12% |
| 8 | Erweiterung MQ |  |  | 0% → 50% |
| 9 | Kommunikation mit DaV | 2007-05-15 → 2007-05-14 (-1d) | 3d → 2d |  |
